Schedule from MS Project, 2019-01-01 to 2019-04-15, costs in zł, A marks actual dates.

## Calendars

- Standard: Mon-Fri 08:00-12:00, 13:00-17:00; Sat-Sun off.

## Resources

| Resource | Rate |
| --- | --- |
| Project Manager | 80 |
| Senior Dev | 55 |
| Regular Dev | 40 |
| Grafik | 35 |
| Tester | 35 |
| Komputery |  |
| Licencje |  |

## Schedule

| ID | WBS | Task | Type | Duration | Start | Finish | Predecessors | Complete | Remaining | Total slack | Free slack | Resources | Work | Actual work | Cost | Actual cost |
| --- | --- | --- | --- | --- | --- | --- | --- | --- | --- | --- | --- | --- | --- | --- | --- | --- |
| 1 | 1 | **ARGame** |  | 75d? | 2019-01-01 A | 2019-04-15 |  | 17% | 61.97d? |  |  |  | 1056h | 174.4h | 46,960 | 8,392 |
| 2 | 1.1 | **Faza koncepcyjna** |  | 4d | 2019-01-01 A | 2019-01-04 |  | 99% | 0d | 0d |  |  | 48h | 48h | 2,480 | 2,480 |
| 3 | 1.1.1 | Przygotowanie dokumentu z wymaganiami |  | 2d | 2019-01-01 A | 2019-01-02 A |  | 100% |  |  |  | Project Manager | 16h | 16h | 1,280 | 1,280 |
| 4 | 1.1.2 | Przygotowanie dokumentu opisującego ogólne założenia gry |  | 2d | 2019-01-01 A | 2019-01-02 A |  | 100% |  |  |  | Regular Dev | 16h | 16h | 640 | 640 |
| 5 | 1.1.3 | Szkice koncepcyjne |  | 2d | 2019-01-03 A | 2019-01-04 A | 4 | 100% |  |  |  | Grafik | 16h | 16h | 560 | 560 |
| 6 | 1.1.4 | Raport I odbiór etapu I | milestone | 0d | 2019-01-04 | 2019-01-04 | 5 |  |  | 0d |  |  |  |  |  |  |
| 7 | 1.2 | **Faza projektu** |  | 18d | 2019-01-07 A | 2019-01-30 | 2 | 53% | 8.45d | 0d |  |  | 184h | 126.4h | 9,080 | 5,912 |
| 8 | 1.2.1 | Wyposażenie biura |  | 2d | 2019-01-07 A | 2019-01-08 A |  | 100% |  |  |  | Project Manager | 16h | 16h | 1,280 | 1,280 |
| 9 | 1.2.2 | Projektowanie logiki gry |  | 5d | 2019-01-09 | 2019-01-15 | 8 |  |  | 11d |  |  |  |  |  |  |
| 10 | 1.2.3 | Kosnultacje z zewnętrznymi osobami odnośnie rozszerzonej rzeczywistości |  | 2d | 2019-01-16 A | 2019-01-17 A | 9 | 100% |  |  |  | Regular Dev; Senior Dev | 32h | 32h | 1,520 | 1,520 |
| 11 | 1.2.4 | Projekt działania rozszerzonej rzeczywistości |  | 2d | 2019-01-18 A | 2019-01-21 A | 10 | 100% |  |  |  | Regular Dev | 16h | 16h | 640 | 640 |
| 12 | 1.2.5 | Przygotowanie podstawowych modeli I grafiki |  | 6d | 2019-01-09 A | 2019-01-16 A | 8 | 100% |  |  |  | Grafik | 48h | 48h | 1,680 | 1,680 |
| 13 | 1.2.6 | Przygotowanie uproszczonej wersji mechanizmu gry |  | 9d | 2019-01-18 A | 2019-01-30 | 10 | 20% | 7.2d | 0d |  | Senior Dev | 72h | 14.4h | 3,960 | 792 |
| 14 | 1.2.7 | Prototyp gry | milestone | 0d | 2019-01-30 | 2019-01-30 | 13 |  |  | 0d |  |  |  |  |  |  |
| 16 | 1.3 | **Faza implementacji** |  | 27d | 2019-01-31 | 2019-03-08 | 7 |  |  | 0d |  |  | 544h |  | 23,480 |  |
| 17 | 1.3.1 | Zaprojektowanie modeli i tekstur |  | 15d | 2019-01-31 | 2019-02-20 |  |  |  | 7d | 0d | Grafik | 120h |  | 4,200 |  |
| 18 | 1.3.2 | Opracowanie finalnej mechaniki gry |  | 18d | 2019-01-31 | 2019-02-25 |  |  |  | 0d |  | Senior Dev; Regular Dev | 288h |  | 13,680 |  |
| 19 | 1.3.3 | Implementacji obsługi bazy danych |  | 3d | 2019-02-26 | 2019-02-28 | 18 |  |  | 0d |  | Regular Dev | 24h |  | 960 |  |
| 20 | 1.3.4 | Opracowanie działania rozszerzonej rzeczywistosci |  | 6d | 2019-03-01 | 2019-03-08 | 19 |  |  | 0d |  | Regular Dev | 48h |  | 1,920 |  |
| 21 | 1.3.5 | Zaprojektowanie UI |  | 5d | 2019-02-21 | 2019-02-27 | 17 |  |  | 7d |  | Grafik | 40h |  | 1,400 |  |
| 22 | 1.3.6 | Implementacja serwera obsługującego statystyki gry |  | 3d | 2019-02-26 | 2019-02-28 | 18 |  |  | 6d |  | Senior Dev | 24h |  | 1,320 |  |
| 23 | 1.3.7 | Raport etapu III | milestone | 0d | 2019-03-08 | 2019-03-08 | 20 |  |  | 0d |  |  |  |  |  |  |
| 24 | 1.4 | **Faza testowania** |  | 17d | 2019-03-11 | 2019-04-02 | 16 |  |  | 0d |  |  | 216h |  | 8,960 |  |
| 25 | 1.4.1 | Testowanie prototypu |  | 10d | 2019-03-11 | 2019-03-22 |  |  |  | 0d |  | Tester | 80h |  | 2,800 |  |
| 26 | 1.4.2 | Poprawki mechaniki |  | 4d | 2019-03-25 | 2019-03-28 | 25 |  |  | 0d |  | Regular Dev; Senior Dev | 64h |  | 3,040 |  |
| 27 | 1.4.3 | Poprawki modeli I tekstur |  | 3d | 2019-03-25 | 2019-03-27 | 25 |  |  | 4d |  | Grafik | 24h |  | 840 |  |
| 28 | 1.4.4 | Optymalizacja skryptów |  | 3d | 2019-03-29 | 2019-04-02 | 26 |  |  | 0d |  | Regular Dev; Senior Dev | 48h |  | 2,280 |  |
| 29 | 1.4.5 | Raport etapu IV | milestone | 0d | 2019-04-02 | 2019-04-02 | 28 |  |  | 0d |  |  |  |  |  |  |

| ID | WBS | Task | Type | Duration | Start | Finish | Predecessors | Total slack | Constraint | Resources | Work | Cost |
| --- | --- | --- | --- | --- | --- | --- | --- | --- | --- | --- | --- | --- |
| 30 | 1.5 | **Faza wdrożenia** |  | 6d | 2019-04-03 | 2019-04-10 | 24 | 0d |  |  | 64h | 2,960 |
| 31 | 1.5.1 | Dodanie kontroli nad statystykami |  | 2d | 2019-04-03 | 2019-04-04 |  | 4d |  | Regular Dev | 16h | 640 |
| 32 | 1.5.2 | Ostateczne poprawki błędów |  | 4d | 2019-04-03 | 2019-04-08 |  | 0d |  | Senior Dev | 32h | 1,760 |
| 33 | 1.5.3 | Przygotowanie instrukcji gry |  | 2d | 2019-04-09 | 2019-04-10 | 32 | 0d |  | Tester | 16h | 560 |
| 34 | 1.5.4 | Raport etapu V | milestone | 0d | 2019-04-10 | 2019-04-10 | 33 | 0d |  |  |  |  |
| 35 | 1.6 | Wdrożenie gry na rynek |  | 3d | 2019-04-11 | 2019-04-15 | 30 | 0d | start no earlier than 2019-01-01 |  |  |  |
